# Сетевая модель проекта

How a schedule from MS Project changed from version to version. A marks actual dates.

## Version 1 (saved 2015-05-10)

Note of the change: Added full economics section

| ID | WBS | Task | Duration | Start | Finish | Predecessors | Total float |
| --- | --- | --- | --- | --- | --- | --- | --- |
| 1 | 1 | **Система построения велосипденых маршрутов** | 74.38d | 2015-02-01 | 2015-05-21 |  | 0d |
| 2 |  | Начало проекта | 0h | 2015-02-01 | 2015-02-01 |  | 0d |
| 3 | 1.2 | **Анализ и проектирование** | 26d | 2015-02-02 | 2015-03-11 |  | 0d |
| 4 |  | Анализ предметной области | 72h | 2015-02-02 | 2015-02-12 | 2 | 0d |
| 5 |  | Выбор средств реализации работы с картой дорог | 36h | 2015-02-02 | 2015-02-06 | 2 | 21.5d |
| 6 |  | Построение архитектуры | 64h | 2015-02-13 | 2015-02-25 | 4 | 0d |
| 7 |  | Проектирование и наполнение баз данных | 72h | 2015-02-26 | 2015-03-11 | 6 | 0d |
| 8 | 1.3 | **Программирование** | 18.5d | 2015-03-12 | 2015-04-07 | 3 | 0d |
| 9 |  | Реализация построения маршрутов | 56h | 2015-03-12 | 2015-03-20 |  | 0d |
| 10 |  | Реализация отображения маршрутов на карте | 48h | 2015-03-23 | 2015-03-30 | 9 | 0d |
| 11 |  | Реализация пользовательского интерфейса | 24h | 2015-03-31 | 2015-04-02 | 10 | 0d |
| 12 |  | Объединение компонентов в единую систему | 20h | 2015-04-03 | 2015-04-07 | 11 | 0d |
| 13 | 1.4 | **Тестирование и написание документации** | 24.38d | 2015-04-07 | 2015-05-13 | 12 | 0d |
| 14 |  | Тестирование и отладка | 150h | 2015-04-07 | 2015-05-05 |  | 0d |
| 15 |  | Написание документации | 45h | 2015-05-05 | 2015-05-13 | 14 | 0d |
| 16 | 1.5 | **Внедрение** | 5.5d | 2015-05-13 | 2015-05-21 | 13 | 0d |
| 17 |  | Развертывание приложения на сервере | 4h | 2015-05-13 | 2015-05-14 |  | 0d |
| 18 |  | Опытная эксплуатация | 40h | 2015-05-14 | 2015-05-21 | 17 | 0d |
| 19 |  | Окночание проекта | 0h | 2015-05-21 | 2015-05-21 | 16 | 0d |

## Version 2 (saved 2015-05-11)

Note of the change: Changed project file gor economics section

Last finish 2015-05-21 → 2015-05-20 (-1d).

Changed:

| ID | Task | Start | Finish | Duration | Total float | Other |
| --- | --- | --- | --- | --- | --- | --- |
| 1 | **Система построения велосипденых маршрутов** |  | 2015-05-21 → 2015-05-20 (-1d) | 74.38d → 74d |  |  |
| 5 | Выбор средств реализации работы с картой дорог |  | 2015-02-06 → 2015-02-05 (-1d) | 36h → 32h | 21.5d → 22d |  |
| 8 | **Программирование** |  | 2015-04-07 → 2015-04-06 (-1d) | 18.5d → 18d |  |  |
| 12 | Объединение компонентов в единую систему |  | 2015-04-07 → 2015-04-06 (-1d) | 20h → 16h |  |  |
| 13 | **Тестирование и написание документации** |  | 2015-05-13 → 2015-05-12 (-1d) | 24.38d → 24d |  |  |
| 14 | Тестирование и отладка |  | 2015-05-05 → 2015-05-04 (-1d) | 150h → 152h |  |  |
| 15 | Написание документации |  | 2015-05-13 → 2015-05-12 (-1d) | 45h → 40h |  |  |
| 16 | **Внедрение** |  | 2015-05-21 → 2015-05-20 (-1d) | 5.5d → 6d |  |  |
| 17 | Развертывание приложения на сервере |  | 2015-05-14 → 2015-05-13 (-1d) | 4h → 8h |  | resources Ведущий программист; Программист → Ведущий программист |
| 18 | Опытная эксплуатация |  | 2015-05-21 → 2015-05-20 (-1d) |  |  |  |
| 19 | Окночание проекта | 2015-05-21 → 2015-05-20 (-1d) | 2015-05-21 → 2015-05-20 (-1d) |  |  |  |
